# Gantt-SFL5-AJOUR

How a schedule from MS Project changed from version to version. A marks actual dates.

## Version 1 (saved 2019-01-15, file Gantt-SFL5-AJOUR.mpp)

| ID | WBS | Task | Duration | Start | Finish | Predecessors |
| --- | --- | --- | --- | --- | --- | --- |
| 1 | 1 | **Projet SFL5** | 80.56d | 2019-01-08 08:00 | 2019-06-17 17:30 |  |
| 2 |  | Phase 1 | 8.81d | 2019-01-08 08:00 | 2019-01-21 17:30 |  |
| 3 |  | Revue R1 | 0d | 2019-02-04 09:00 | 2019-02-04 09:00 | 2 |
| 4 |  | Phase 2 | 16.56d | 2019-02-04 09:00 | 2019-03-15 17:30 | 3 |
| 5 |  | Revue R2 | 0d | 2019-03-18 09:00 | 2019-03-18 09:00 | 4 |
| 6 |  | Phase 3 | 24.56d | 2019-03-18 08:00 | 2019-05-10 17:30 |  |
| 7 |  | Revue R3 | 0d | 2019-05-13 08:00 | 2019-05-13 08:00 | 6 |
| 8 |  | Livraison (Li) | 0d | 2019-06-17 08:00 | 2019-06-17 08:00 |  |
| 10 | 2 | **Phase 1** | 17.44d | 2019-01-08 08:00 | 2019-02-04 16:30 |  |
| 11 | 2.1 | **Documentation** | 8.69d | 2019-01-08 08:00 | 2019-01-21 16:30 |  |
| 12 |  | Analyse du cahier des charges | 0.88d? | 2019-01-08 08:00 | 2019-01-08 17:00 |  |
| 13 |  | Rédaction d'une mind-map de projet | 0.75d | 2019-01-08 08:00 | 2019-01-08 17:00 |  |
| 14 |  | Rédaction Diapo R1 | 0.75d | 2019-01-08 08:00 | 2019-01-08 17:00 |  |
| 15 |  | Rédaction du Dossier | 0.88d? | 2019-01-08 08:00 | 2019-01-08 17:00 |  |
| 16 | 2.2 | **Choix capteurs** | 4.44d | 2019-01-08 08:00 | 2019-01-14 17:30 |  |
| 17 |  | Intensité Lumineuse | 3.56d | 2019-01-08 08:00 | 2019-01-11 17:30 |  |
| 18 |  | Hygrométrie | 3.56d | 2019-01-08 08:00 | 2019-01-11 17:30 |  |
| 19 |  | Rapport sur les capteurs choisis | 1.81d | 2019-01-11 08:00 | 2019-01-14 17:30 |  |
| 21 |  | Application Android | 0.88d? | 2019-01-08 08:00 | 2019-01-08 17:00 |  |
| 24 |  | Physique - Etalonnage | 0.88d | 2019-01-08 09:00 | 2019-01-08 18:00 |  |
| 25 |  | Anémomètre-girouette | 0.88d | 2019-01-08 09:00 | 2019-01-08 18:00 |  |
| 26 |  | Solarimètre-Hygromètre | 0.88d | 2019-01-08 09:00 | 2019-01-08 18:00 |  |
| 27 |  | Capteurs de températures | 0.88d | 2019-01-08 09:00 | 2019-01-08 18:00 |  |
| 28 |  | Pluviomètre | 0.88d | 2019-01-08 09:00 | 2019-01-08 18:00 |  |

## Version 2 (saved 2019-01-16, file Gantt-SFL5-AJOUR.mpp)

Note of the change: maj

Last finish stays 2019-06-17.

Added:

| ID | Task | Duration | Start | Finish |
| --- | --- | --- | --- | --- |
| 29 | Phase 2 | 0.88d? | 2019-01-08 09:00 | 2019-01-08 18:00 |
| 30 | Réalisation de la base de données | 0.88d? | 2019-01-08 09:00 | 2019-01-08 18:00 |

## Version 3 (saved 2019-01-18, file Gantt-SFL5-AJOUR.mpp)

Note of the change: mj

Last finish 2019-06-17 → 2019-06-07 (-10d). Complete tasks 0 → 2.

Added:

| ID | Task | Duration | Start | Finish | Predecessors | Constraint | Resources |
| --- | --- | --- | --- | --- | --- | --- | --- |
| 6 | Début de la redaction du dossier commun | 7.81d | 2019-01-08 09:00 | 2019-01-21 09:30 |  |  | ID-1 Killian Labattut |
| 7 | Rédaction Revue R1 | 0.81d | 2019-01-08 09:00 A | 2019-01-09 09:30 A |  |  | Tout le Crew |
| 8 | Réalisation Diagramme de classe : partie interface web | 0.81d | 2019-01-18 08:00 | 2019-01-18 17:30 |  |  | ID-3 Valentin Chevallier |
| 9 | Réalisation Diagramme de cas d'utilisation : partie interface web | 1.75d | 2019-01-18 17:30 A | 2019-01-22 17:30 A | 8 | start no earlier than 2019-01-18 08:00 | ID-3 Valentin Chevallier |
| 10 | Réalisation Diagramme de classe : partie Centrale Raspberry | 0.81d | 2019-01-08 09:00 | 2019-01-09 09:30 |  |  | ID-1 Killian Labattut; ID-4 Audran Raynal |
| 11 | Réalisation Diagramme de séquence : partie Centrale Rasberry | 0.81d | 2019-01-08 09:00 | 2019-01-09 09:30 |  |  | ID-1 Killian Labattut |
| 12 | Création modèle relationel de base de données | 0.81d | 2019-01-21 17:00 | 2019-01-22 17:30 |  |  | ID-3 Valentin Chevallier |

Removed: 2 Phase 1; 3 Revue R1; 4 Phase 2; 5 Revue R2; 6 Phase 3; 7 Revue R3; 8 Livraison (Li); 14 Rédaction Diapo R1; 15 Rédaction du Dossier; 21 Application Android; 24 Physique - Etalonnage

Changed:

| ID | Task | Start | Finish | Duration | Complete | Other |
| --- | --- | --- | --- | --- | --- | --- |
| 1 | **Projet SFL5** | 2019-01-08 08:00 A | 2019-06-17 17:30 → 2019-06-07 17:30 (-10d) | 80.56d → 75.31d | 0% → 10% |  |
| 2 | **Phase 1** | 2019-01-08 08:00 A | 2019-02-04 16:30 → 2019-01-25 17:30 (-10d) | 17.44d → 12.31d | 0% → 10% |  |
| 3 | **Documentation** | 2019-01-08 08:00 → 2019-01-08 09:00 A | 2019-01-21 16:30 → 2019-01-25 17:30 (+4d) | 8.69d → 12.19d | 0% → 16% |  |
| 4 | Analyse du cahier des charges | 2019-01-08 08:00 → 2019-01-08 09:00 | 2019-01-08 17:00 → 2019-01-10 09:30 (+2d) | 0.88d? → 1.69d |  | resources none → Tout le Crew |
| 5 | Rédaction d'une mind-map de projet | 2019-01-08 08:00 → 2019-01-08 09:00 | 2019-01-08 17:00 → 2019-01-08 18:00 | 0.75d → 0.88d |  | resources Tout le Crew → ID-3 Valentin Chevallier |

## Version 4 (saved 2019-01-23, file Gantt-SFL5-AJOUR.mpp)

Note of the change: maj

Last finish stays 2019-06-07.

Added:

| ID | Task | Duration | Start | Finish | Constraint | Resources |
| --- | --- | --- | --- | --- | --- | --- |
| 17 | **Phase 2** | 35.06d | 2019-01-30 08:00 | 2019-04-26 17:30 |  |  |
| 18 | **Etudiant 1** | 35.06d | 2019-01-30 08:00 | 2019-04-26 17:30 |  |  |
| 19 | Anémomètrie | 10.44d | 2019-01-30 08:00 | 2019-03-01 17:30 |  | ID-1 Killian Labattut |
| 20 | girouette | 23.56d | 2019-03-04 09:00 | 2019-04-26 09:30 | start no earlier than 2019-03-04 08:00 | ID-1 Killian Labattut |
| 21 | **etudiant 2** | 0.75d | 2019-01-30 08:00 | 2019-01-30 17:00 |  |  |
| 23 | Capteur Hygromètrique | 0.62d | 2019-01-30 08:00 | 2019-01-30 16:00 |  | ID-2 Lucas Mineaud |
| 24 | **etudiant 3** | 0.75d? | 2019-01-30 08:00 | 2019-01-30 17:00 |  |  |

Removed: 17 Anémomètre-girouette; 21 Phase 2

Changed:

| ID | Task | Start | Finish | Complete | Other |
| --- | --- | --- | --- | --- | --- |
| 1 | **Projet SFL5** |  |  | 10% → 4% |  |
| 22 | capteur d'intensité lumineuse | 2019-01-08 09:00 → 2019-01-30 08:00 (+22d) | 2019-01-08 18:00 → 2019-01-30 17:00 (+22d) |  | was named Solarimètre-Hygromètre |
| 25 | Capteurs de températures | 2019-01-08 09:00 → 2019-01-30 08:00 (+22d) | 2019-01-08 18:00 → 2019-01-30 17:00 (+22d) |  |  |
| 26 | Pluviomètre | 2019-01-08 09:00 → 2019-01-30 08:00 (+22d) | 2019-01-08 18:00 → 2019-01-30 17:00 (+22d) |  |  |
| 27 | Réalisation de la base de données | 2019-01-08 09:00 → 2019-01-30 08:00 (+22d) | 2019-01-08 18:00 → 2019-01-30 17:00 (+22d) |  |  |

## Version 5 (saved 2019-01-25, file Gantt-SFL5-AJOUR.mpp)

Note of the change: Merge branch 'master' of https://github.com/lucasminaud/projet_sfl5_serre_automatique

Last finish stays 2019-06-07.

Added:

| ID | Task | Duration | Start | Finish |
| --- | --- | --- | --- | --- |
| 18 | **Mise en place des capteurs** | 15.81d | 2019-01-30 | 2019-03-09 |
| 28 | **Etudiant 4** | 14.94d | 2019-01-30 | 2019-03-08 |
| 29 | Capteurs de températures | 6.06d | 2019-01-30 | 2019-02-07 |
| 30 | Capteur Hygromètrique | 9.31d | 2019-02-25 | 2019-03-09 |
| 31 | Réalisation Carte de gestion | 20.19d | 2019-03-11 | 2019-04-26 |
| 32 | Réalisation Carte de gestion | 20.19d | 2019-03-11 | 2019-04-26 |
| 33 | Réalisation Application Android | 20.19d | 2019-03-11 | 2019-04-26 |

Removed: 27 Réalisation de la base de données

Changed:

| ID | Task | Start | Finish | Duration | Complete | Total float | Other |
| --- | --- | --- | --- | --- | --- | --- | --- |
| 1 | **Projet SFL5** | 2019-01-08 08:00 A → 2019-01-08 A | 2019-06-07 17:30 → 2019-06-07 |  | 4% → 2% |  |  |
| 2 | **Phase 1** | 2019-01-08 08:00 A → 2019-01-08 A | 2019-01-25 17:30 → 2019-01-25 |  |  |  |  |
| 3 | **Documentation** | 2019-01-08 09:00 A → 2019-01-08 A | 2019-01-25 17:30 → 2019-01-25 |  |  |  |  |
| 4 | Analyse du cahier des charges | 2019-01-08 09:00 → 2019-01-08 | 2019-01-10 09:30 → 2019-01-10 |  |  |  |  |
| 5 | Rédaction d'une mind-map de projet | 2019-01-08 09:00 → 2019-01-08 | 2019-01-08 18:00 → 2019-01-08 |  |  |  |  |
| 6 | Début de la redaction du dossier commun | 2019-01-08 09:00 → 2019-01-08 | 2019-01-21 09:30 → 2019-01-21 |  |  |  |  |
| 7 | Rédaction Revue R1 | 2019-01-08 09:00 A → 2019-01-08 A | 2019-01-09 09:30 A → 2019-01-09 A |  |  |  |  |
| 8 | Réalisation Diagramme de classe : partie interface web | 2019-01-18 08:00 → 2019-01-18 | 2019-01-18 17:30 → 2019-01-18 |  |  |  |  |
| 9 | Réalisation Diagramme de cas d'utilisation : partie interface web | 2019-01-18 17:30 A → 2019-01-18 A | 2019-01-22 17:30 A → 2019-01-22 A |  |  |  | constraint start no earlier than 2019-01-18 08:00 → start no earlier than 2019-01-18 |
| 10 | Réalisation Diagramme de classe : partie Centrale Raspberry | 2019-01-08 09:00 → 2019-01-08 | 2019-01-09 09:30 → 2019-01-09 |  |  |  |  |
| 11 | Réalisation Diagramme de séquence : partie Centrale Rasberry | 2019-01-08 09:00 → 2019-01-08 | 2019-01-09 09:30 → 2019-01-09 |  |  |  |  |
| 12 | Création modèle relationel de base de données | 2019-01-21 17:00 → 2019-01-21 | 2019-01-22 17:30 → 2019-01-22 |  |  |  |  |
| 13 | **Choix capteurs** | 2019-01-08 08:00 → 2019-01-08 | 2019-01-14 17:30 → 2019-01-14 |  |  |  |  |
| 14 | Intensité Lumineuse | 2019-01-08 08:00 → 2019-01-08 | 2019-01-11 17:30 → 2019-01-11 |  |  |  |  |
| 15 | Hygrométrie | 2019-01-08 08:00 → 2019-01-08 | 2019-01-11 17:30 → 2019-01-11 |  |  |  |  |
| 16 | Rapport sur les capteurs choisis | 2019-01-11 08:00 → 2019-01-11 | 2019-01-14 17:30 → 2019-01-14 |  |  |  |  |
| 17 | **Phase 2** | 2019-01-30 08:00 → 2019-01-30 | 2019-04-26 17:30 → 2019-04-26 |  |  |  |  |
| 19 | **Etudiant 1** | 2019-01-30 08:00 → 2019-01-30 | 2019-04-26 17:30 → 2019-03-08 (-49d) | 35.06d → 14.94d |  |  |  |
| 20 | Anémomètrie | 2019-01-30 08:00 → 2019-01-30 | 2019-03-01 17:30 → 2019-02-07 (-22d) | 10.44d → 6.06d |  |  |  |
| 21 | Girouette | 2019-03-04 09:00 → 2019-02-25 (-7d) | 2019-04-26 09:30 → 2019-03-08 (-49d) | 23.56d → 8.69d |  | 27d → none | was named girouette; constraint start no earlier than 2019-03-04 08:00 → start no earlier than 2019-02-25 |
| 22 | **Etudiant 2** | 2019-01-30 08:00 → 2019-01-30 | 2019-01-30 17:00 → 2019-03-08 (+37d) | 0.75d → 14.94d |  | 0d → none | was named etudiant 2 |
| 23 | Capteur d'intensité lumineuse | 2019-01-30 08:00 → 2019-01-30 | 2019-01-30 17:00 → 2019-02-07 (+8d) | 0.88d → 6.06d |  |  | was named capteur d'intensité lumineuse |
| 24 | Capteur Hygromètrique | 2019-01-30 08:00 → 2019-02-25 (+26d) | 2019-01-30 16:00 → 2019-03-08 (+37d) | 0.62d → 8.69d |  |  |  |
| 25 | **Etudiant 3** | 2019-01-30 08:00 → 2019-01-30 | 2019-01-30 17:00 → 2019-03-08 (+37d) | 0.75d? → 15d |  | 0d → none | was named etudiant 3 |
| 26 | Capteurs de températures | 2019-01-30 08:00 → 2019-01-30 | 2019-01-30 17:00 → 2019-02-07 (+8d) | 0.88d → 6.06d |  |  |  |
| 27 | Capteur Hygromètrique | 2019-01-30 08:00 → 2019-02-25 (+26d) | 2019-01-30 17:00 → 2019-03-08 (+37d) | 0.88d → 8.69d |  |  | was named Pluviomètre; constraint none → finish no earlier than 2019-03-07 |

## Version 6 (saved 2019-02-01, file Gantt-SFL5-AJOUR.mpp)

Note of the change: Merge branch 'master' of https://github.com/lucasminaud/projet_sfl5_serre_automatique

Last finish stays 2019-06-07.

Added:

| ID | Task | Duration | Start | Finish |
| --- | --- | --- | --- | --- |
| 34 | **Phase 3** | 0.75d? | 2019-01-08 | 2019-01-08 |
| 35 | Sciences physiques | 0.88d? | 2019-01-08 | 2019-01-08 |
| 36 | Etalonnage | 0.88d? | 2019-01-08 | 2019-01-08 |
| 37 | Date de rendu du projet | 0.88d? | 2019-01-08 | 2019-01-08 |

Changed:

| ID | Task | Finish | Duration | Complete |
| --- | --- | --- | --- | --- |
| 1 | **Projet SFL5** |  |  | 2% → 1% |
| 31 | Réalisation Carte de gestion | 2019-04-26 → 2019-05-14 (+18d) | 20.19d → 30d |  |
| 32 | Réalisation Carte de gestion | 2019-04-26 → 2019-05-14 (+18d) | 20.19d → 30d |  |
| 33 | Réalisation Application Android | 2019-04-26 → 2019-05-14 (+18d) | 20.19d → 30d |  |

## Version 7 (saved 2019-02-05, file Gantt-SFL5-final_1ere_partie.mpp)

Note of the change: maj

Last finish 2019-06-07 → 2019-05-14 (-24d). Complete tasks 2 → 11.

Added:

| ID | Task | Duration | Start | Finish |
| --- | --- | --- | --- | --- |
| 29 | **Réalisation** | 29.88d | 2019-03-11 | 2019-05-14 |

Removed: 7 Rédaction Revue R1; 30 Capteur Hygromètrique

Changed:

| ID | Task | Start | Finish | Duration | Complete | Total float | Predecessors | Other |
| --- | --- | --- | --- | --- | --- | --- | --- | --- |
| 1 | **Projet SFL5** | 2019-01-08 A → 2019-01-07 A (-1d) | 2019-06-07 → 2019-05-14 (-24d) | 75.31d → 59.62d? | 1% → 18% | none → 0d |  |  |
| 2 | **Phase 1** | 2019-01-08 A → 2019-01-07 A (-1d) | 2019-01-25 → 2019-01-29 A (+4d) | 12.31d → 14.81d | 10% → 100% |  |  |  |
| 3 | **Documentation** | 2019-01-08 A → 2019-01-07 A (-1d) | 2019-01-25 → 2019-01-28 A (+3d) | 12.19d → 13.94d | 16% → 100% |  |  |  |
| 4 | Analyse du cahier des charges | 2019-01-08 → 2019-01-07 A (-1d) | 2019-01-10 A | 1.69d → 3.44d | 0% → 100% |  |  |  |
| 5 | Rédaction d'une mind-map de projet | 2019-01-08 → 2019-01-11 A (+3d) | 2019-01-08 → 2019-01-11 A (+3d) |  | 0% → 100% |  | none → 4 |  |
| 6 | Début de la redaction du dossier commun | 2019-01-08 → 2019-01-11 A (+3d) | 2019-01-21 → 2019-01-18 A (-3d) | 7.81d → 5.19d | 0% → 100% |  | none → 4 |  |
| 7 | Réalisation Diagramme de classe : partie interface web | 2019-01-18 → 2019-01-14 A (-4d) | 2019-01-18 → 2019-01-16 A (-2d) | 0.81d → 2.56d | 0% → 100% |  | none → 5 |  |
| 8 | Réalisation Diagramme de cas d'utilisation : partie interface web | 2019-01-18 A → 2019-01-17 A (-1d) | 2019-01-22 A → 2019-01-21 A (-1d) | 1.75d → 2.69d |  |  |  | constraint start no earlier than 2019-01-18 → start no earlier than 2019-01-17 |
| 9 | Réalisation Diagramme de classe : partie Centrale Raspberry | 2019-01-08 → 2019-01-22 A (+14d) | 2019-01-09 → 2019-01-23 A (+14d) | 0.81d → 1.69d | 0% → 100% |  | none → 6 |  |
| 10 | Réalisation Diagramme de séquence : partie Centrale Rasberry | 2019-01-08 → 2019-01-25 A (+17d) | 2019-01-09 → 2019-01-28 A (+19d) | 0.81d → 1.69d | 0% → 100% |  | none → 9 |  |
| 11 | Création modèle relationel de base de données | 2019-01-21 → 2019-01-22 A (+1d) | 2019-01-22 → 2019-01-25 A (+3d) | 0.81d → 3.44d | 0% → 100% |  | none → 8 |  |
| 12 | **Choix capteurs** | 2019-01-08 → 2019-01-11 A (+3d) | 2019-01-14 → 2019-01-29 A (+15d) | 4.44d → 11.31d | 0% → 100% |  | none → 4 | resources none → ID-2 Lucas Minaud |
| 13 | Intensité Lumineuse | 2019-01-08 → 2019-01-11 A (+3d) | 2019-01-11 → 2019-01-17 A (+6d) | 3.56d → 4.44d | 0% → 100% |  |  | resources none → ID-2 Lucas Minaud |
| 14 | Hygrométrie | 2019-01-08 → 2019-01-18 A (+10d) | 2019-01-11 → 2019-01-24 A (+13d) |  | 0% → 100% |  | none → 13 | resources none → ID-2 Lucas Minaud |
| 15 | Rapport sur les capteurs choisis | 2019-01-11 → 2019-01-24 A (+13d) | 2019-01-14 → 2019-01-29 A (+15d) | 1.81d → 3.44d | 0% → 100% |  | none → 14 | resources none → ID-2 Lucas Minaud |
| 16 | **Phase 2** | 2019-01-30 → 2019-01-29 A (-1d) | 2019-04-26 → 2019-05-14 (+18d) | 35.06d → 44.81d? | 0% → 1% | none → 0d | none → 2 |  |
| 17 | **Mise en place des capteurs** | 2019-01-30 A | 2019-03-09 → 2019-03-08 (-1d) | 15.81d → 14.88d | 0% → 1% | none → 0d |  |  |
| 18 | **Etudiant 1** |  |  | 14.94d → 14.88d |  | none → 0d | none → 2 | resources none → ID-1 Killian Labattut |
| 19 | Anémomètrie |  |  |  |  |  |  | resources ID-1 Killian Labattut → none |
| 20 | Girouette | 2019-02-25 → 2019-02-07 (-18d) |  | 8.69d → 8.81d |  |  | none → 19 | resources ID-1 Killian Labattut → none |
| 21 | **Etudiant 2** | 2019-01-30 A |  | 14.94d → 14.87d | 0% → 5% | none → 0d | none → 2 | resources none → ID-2 Lucas Minaud |
| 22 | Capteur d'intensité lumineuse | 2019-01-30 A |  |  | 0% → 13% |  |  | resources ID-2 Lucas Mineaud → none |
| 23 | Capteur Hygromètrique | 2019-02-25 → 2019-02-07 (-18d) |  | 8.69d → 8.81d |  |  | none → 22 | resources ID-2 Lucas Mineaud → none |
| 24 | **Etudiant 3** |  |  | 15d → 14.75d |  | none → 0d | none → 2 | resources none → ID-3 Valentin Chevallier |
| 25 | Capteurs Températures Serre |  |  |  |  |  |  | was named Capteurs de températures; resources ID-3 Valentin Chevallier → none |
| 26 | Capteur Temperature Eau | 2019-02-25 → 2019-02-07 (-18d) |  |  |  |  | none → 25 | was named Capteur Hygromètrique; resources ID-4 Audran Raynal → none |
| 27 | **Etudiant 4** |  |  | 14.94d → 14.81d |  | none → 0d | none → 2 | resources none → ID-4 Audran Raynal |
| 28 | Capteurs de pluviométrie |  | 2019-02-07 → 2019-03-08 (+29d) | 6.06d → 14.94d |  |  |  | was named Capteurs de températures |
| 33 | **Phase 3** | 2019-01-08 → 2019-01-29 (+21d) | 2019-01-08 → 2019-01-30 (+22d) | 0.75d? → 0.88d? |  |  |  |  |
| 34 | Sciences physiques | 2019-01-08 → 2019-01-29 (+21d) | 2019-01-08 → 2019-01-30 (+22d) |  |  |  |  |  |
| 35 | Etalonnage | 2019-01-08 → 2019-01-29 (+21d) | 2019-01-08 → 2019-01-30 (+22d) |  |  |  |  |  |
| 36 | Date de rendu du projet | 2019-01-08 → 2019-01-29 (+21d) | 2019-01-08 → 2019-01-30 (+22d) |  |  |  |  |  |

## Version 8 (saved 2019-05-10, file Gantt-SFL5-final_1ere_partie.mpp)

Last finish 2019-05-14 → 2019-05-17 (+3d). Complete tasks 11 → 16.

Removed: 20 Girouette

Changed:

| ID | Task | Start | Finish | Duration | Complete | Total float | Other |
| --- | --- | --- | --- | --- | --- | --- | --- |
| 1 | **Projet SFL5** |  | 2019-05-14 → 2019-05-17 (+3d) | 59.62d? → 63d? | 18% → 74% |  |  |
| 2 | **Phase 1** |  | 2019-01-29 A → 2019-01-29 |  | 100% → 99% | none → 0d |  |
| 3 | **Documentation** |  | 2019-01-28 A → 2019-01-28 |  | 100% → 99% | none → 0d |  |
| 4 | Analyse du cahier des charges |  | 2019-01-10 A → 2019-01-10 | 3.44d → 3.56d | 100% → 96% |  | resources Tout le Crew → ID-1 Killian Labattut; ID-2 Lucas Minaud; ID-3 Valentin Chevallier; ID-4 Audran Raynal |
| 16 | **Phase 2** |  | 2019-05-14 → 2019-05-17 (+3d) | 44.81d? → 48.19d? | 1% → 67% |  |  |
| 17 | **Mise en place des capteurs** |  | 2019-03-08 → 2019-05-10 (+63d) | 14.88d → 43.69d | 1% → 88% |  |  |
| 18 | **Etudiant 1** | 2019-01-30 → 2019-04-03 A (+63d) | 2019-03-08 → 2019-05-10 (+63d) | 14.88d → 13.94d | 0% → 50% |  |  |
| 19 | Anémomètrie et Girouette | 2019-01-30 → 2019-04-03 A (+63d) | 2019-02-07 → 2019-05-10 (+92d) | 6.06d → 14.06d | 0% → 50% |  | was named Anémomètrie |
| 20 | **Etudiant 2** |  | 2019-03-08 A |  | 5% → 100% | 0d → none |  |
| 21 | Capteur d'intensité lumineuse |  | 2019-02-07 A |  | 13% → 100% |  |  |
| 22 | Capteur Hygromètrique | 2019-02-07 A | 2019-03-08 A |  | 0% → 100% |  |  |
| 23 | **Etudiant 3** | 2019-01-30 A | 2019-03-08 A |  | 0% → 100% | 0d → none |  |
| 24 | Capteurs Températures Serre | 2019-01-30 A | 2019-02-07 A |  | 0% → 100% |  |  |
| 25 | Capteur Temperature Eau | 2019-02-07 A | 2019-03-08 A |  | 0% → 100% |  |  |
| 26 | **Etudiant 4** | 2019-01-30 A | 2019-03-08 A |  | 0% → 100% | 0d → none |  |
| 27 | Capteurs de pluviométrie | 2019-01-30 A | 2019-03-08 A |  | 0% → 100% |  |  |
| 28 | **Réalisation** | 2019-03-11 → 2019-01-30 A (-40d) | 2019-05-14 → 2019-05-17 (+3d) | 29.88d → 48.12d | 0% → 49% |  |  |
| 29 | Réalisation Carte de gestion | 2019-03-11 → 2019-01-30 A (-40d) | 2019-05-14 → 2019-04-03 A (-41d) |  | 0% → 100% |  |  |
| 30 | Intégration des capteurs | 2019-03-11 → 2019-05-17 A (+67d) | 2019-05-14 → 2019-05-17 (+3d) | 30d → 1d |  |  | was named Réalisation Carte de gestion |

## Version 9 (saved 2019-06-03, file Gantt-SFL5-final_1ere_partie.mpp)

Note of the change: df

Last finish 2019-05-17 → 2019-06-06 (+20d).

Added:

| ID | Task | Duration | Start | Finish | Predecessors | Resources |
| --- | --- | --- | --- | --- | --- | --- |
| 32 | **Réalisation Application Web** | 45d | 2019-03-08 A | 2019-06-06 | 20 |  |
| 33 | Temps réel | 45d | 2019-03-08 | 2019-06-05 |  | ID-3 Valentin Chevallier |
| 34 | évolution du système de la serre | 45d | 2019-03-08 A | 2019-06-05 |  | ID-2 Lucas Minaud |

Changed:

| ID | Task | Finish | Duration | Complete | Other |
| --- | --- | --- | --- | --- | --- |
| 1 | **Projet SFL5** | 2019-05-17 → 2019-06-06 (+20d) | 63d? → 74.75d? | 74% → 61% |  |
| 16 | **Phase 2** | 2019-05-17 → 2019-06-06 (+20d) | 48.19d? → 59.94d? | 67% → 55% |  |
| 28 | **Réalisation** | 2019-05-17 → 2019-06-06 (+20d) | 48.12d → 59.87d | 49% → 44% |  |
| 29 | Réalisation Carte de gestion |  |  |  | resources none → ID-1 Killian Labattut |
| 30 | Intégration des capteurs |  |  |  | resources none → ID-1 Killian Labattut; ID-2 Lucas Minaud; ID-3 Valentin Chevallier; ID-4 Audran Raynal |
| 31 | Réalisation Application Android |  |  |  | resources none → ID-4 Audran Raynal |
